How a schedule from MS Project changed from version to version. A marks actual dates.

## Version 1 (saved 2026-11-22, file процент.mpp)

| ID | WBS | Task | Duration | Start | Finish | Predecessors | Complete | Total float | Constraint |
| --- | --- | --- | --- | --- | --- | --- | --- | --- | --- |
| 1 |  | Начало проекта | 1d | 2026-10-21 | 2026-10-21 |  |  | 0d | start no earlier than 2026-10-21 |
| 2 | 2 | **Выравнивание стен** | 15d | 2026-10-22 | 2026-11-11 |  |  | 6d |  |
| 3 |  | Стены в спальне | 4d | 2026-10-22 | 2026-10-27 | 1 |  | 6d |  |
| 4 |  | Стены в гостиной | 4d | 2026-10-28 | 2026-11-02 | 3 |  | 6d |  |
| 5 |  | Стены в кухне | 3d | 2026-11-03 | 2026-11-05 | 4 |  | 6d |  |
| 6 |  | Стены в прихожей | 4d | 2026-11-06 | 2026-11-11 | 5 |  | 6d |  |
| 7 |  | Выравнивание стен завершено | 0d | 2026-11-11 | 2026-11-11 | 6 |  | 6d |  |
| 8 | 3 | **Санузел** | 12d | 2026-10-22 | 2026-11-06 |  |  | 9d |  |
| 9 |  | Снятие штукатурки в санузле | 3d | 2026-10-22 | 2026-10-26 | 1 |  | 9d |  |
| 10 |  | Отделка стен санузла | 4d | 2026-10-27 | 2026-10-30 | 9 |  | 9d |  |
| 11 |  | Отделка потолка санузла | 2d | 2026-11-02 | 2026-11-03 | 10 |  | 9d |  |
| 12 |  | Отделка пола санузла | 2d | 2026-11-04 | 2026-11-05 | 11 |  | 9d |  |
| 13 |  | Установка сантехнического оборудования | 1d | 2026-11-06 | 2026-11-06 | 12 |  | 9d |  |
| 14 |  | Ремонт санузла завершен | 0d | 2026-11-06 | 2026-11-06 | 13 |  | 9d |  |
| 15 | 4 | **Ванная** | 21d | 2026-10-22 | 2026-11-19 |  |  | 0d |  |
| 16 |  | Снятие штукатурки в ванной | 3d | 2026-10-22 | 2026-10-29 | 1 |  | 0d |  |
| 17 |  | Отделка стен ванной | 5d | 2026-10-30 | 2026-11-12 | 16 |  | 0d | finish no earlier than 2026-11-12 |
| 18 |  | Отделка потолка ванной | 2d | 2026-11-13 | 2026-11-16 | 17 |  | 0d |  |
| 19 |  | Отделка пола ванной | 2d | 2026-11-17 | 2026-11-18 | 18 |  | 0d |  |
| 20 |  | Установка сантехники | 1d | 2026-11-19 | 2026-11-19 | 19 |  | 0d |  |
| 21 |  | Ремонт ванной завершен | 0d | 2026-11-19 | 2026-11-19 | 20 |  | 0d |  |
| 22 | 5 | **Отделка стен** | 21d | 2026-11-20 | 2026-12-18 |  |  | 0d |  |
| 23 |  | Отделка стен в спальне | 5d | 2026-11-20 | 2026-11-26 | 7, 14, 21 |  | 0d |  |
| 24 |  | Отделка стен в гостиной | 7d | 2026-11-27 | 2026-12-07 | 23 |  | 0d |  |
| 25 |  | Отделка стен в кухне | 5d | 2026-12-08 | 2026-12-14 | 24 |  | 0d |  |
| 26 |  | Отделка стен в прихожей | 4d | 2026-12-15 | 2026-12-18 | 25 |  | 0d |  |
| 27 |  | Отделка стен завершена | 0d | 2026-12-18 | 2026-12-18 | 26 |  | 10d |  |
| 28 | 6 | **Потолки** | 29d | 2026-11-12 A | 2026-12-22 |  | 50% | 8d |  |
| 29 |  | Замер | 2d | 2026-11-12 A | 2026-11-13 A | 7 | 100% |  |  |
| 30 |  | Заказ и оплата потолков | 2d | 2026-11-16 A | 2026-11-17 A | 29 | 100% |  |  |
| 31 |  | Навесной потолок в спальне | 2d | 2026-12-02 A | 2026-12-03 | 23, 30FS+10d | 50% | 15d |  |
| 32 |  | Навесной потолок в гостиной | 2d | 2026-12-08 A | 2026-12-09 | 24, 30FS+10d | 50% | 7d |  |
| 33 |  | Панельный потолок в кухне | 2d | 2026-12-21 | 2026-12-22 | 25, 30 |  | 5d |  |
| 34 |  | Навесной потолок в прихожей | 2d | 2026-12-21 | 2026-12-22 | 26, 30FS+10d |  | 0d |  |
| 35 |  | Монтаж потолков завершен | 0d | 2026-12-22 | 2026-12-22 | 31, 32, 33, 34 |  | 8d |  |
| 36 | 7 | **Полы** | 21d | 2026-12-04 | 2027-01-01 |  |  | 0d |  |
| 37 |  | Отделка полов в спальне | 6d | 2026-12-04 | 2026-12-11 | 31 |  | 15d |  |
| 38 |  | Отделка полов в гостиной | 6d | 2026-12-14 | 2026-12-21 | 32 |  | 9d |  |
| 39 |  | Отделка полов в кухне | 3d | 2026-12-23 | 2026-12-25 | 33 |  | 5d |  |
| 40 |  | Отделка полов в прихожей | 5d | 2026-12-28 | 2027-01-01 | 34 |  | 0d |  |
| 41 |  | Отделка полов завершена | 0d | 2027-01-01 | 2027-01-01 | 37, 38, 39, 40 |  | 0d |  |
| 42 |  | Конец проекта | 0d | 2027-01-01 | 2027-01-01 | 41 |  | 0d |  |

## Version 2 (saved 2026-11-22, file факт.mpp)

Last finish 2027-01-01 → 2027-01-04 (+3d). Complete tasks 2 → 1.

Changed:

| ID | Task | Start | Finish | Duration | Complete | Total float | Other |
| --- | --- | --- | --- | --- | --- | --- | --- |
| 1 | Начало проекта |  |  |  |  | 0d → 7d | baseline start 2026-10-21 → none; baseline finish 2026-10-21 → none |
| 2 | **Выравнивание стен** |  |  |  |  | 6d → 7d | baseline start 2026-10-22 → none; baseline finish 2026-11-11 → none |
| 3 | Стены в спальне |  |  |  |  |  | baseline start 2026-10-22 → none; baseline finish 2026-10-27 → none |
| 4 | Стены в гостиной |  |  |  |  |  | baseline start 2026-10-28 → none; baseline finish 2026-11-02 → none |
| 5 | Стены в кухне |  |  |  |  |  | baseline start 2026-11-03 → none; baseline finish 2026-11-05 → none |
| 6 | Стены в прихожей |  |  |  |  |  | baseline start 2026-11-06 → none; baseline finish 2026-11-11 → none |
| 7 | Выравнивание стен завершено |  |  |  |  |  | baseline start 2026-11-11 → none; baseline finish 2026-11-11 → none |
| 8 | **Санузел** |  |  |  |  | 9d → 10d | baseline start 2026-10-22 → none; baseline finish 2026-11-06 → none |
| 9 | Снятие штукатурки в санузле |  |  |  |  |  | baseline start 2026-10-22 → none; baseline finish 2026-10-26 → none |
| 10 | Отделка стен санузла |  |  |  |  |  | baseline start 2026-10-27 → none; baseline finish 2026-10-30 → none |
| 11 | Отделка потолка санузла |  |  |  |  |  | baseline start 2026-11-02 → none; baseline finish 2026-11-03 → none |
| 12 | Отделка пола санузла |  |  |  |  |  | baseline start 2026-11-04 → none; baseline finish 2026-11-05 → none |
| 13 | Установка сантехнического оборудования |  |  |  |  |  | baseline start 2026-11-06 → none; baseline finish 2026-11-06 → none |
| 14 | Ремонт санузла завершен |  |  |  |  |  | baseline start 2026-11-06 → none; baseline finish 2026-11-06 → none |
| 15 | **Ванная** | 2026-10-22 A | 2026-11-19 → 2026-11-20 (+1d) | 21d → 22d | 0% → 38% |  | baseline start 2026-10-22 → none; baseline finish 2026-11-19 → none |
| 16 | Снятие штукатурки в ванной | 2026-10-22 A | 2026-10-29 A |  | 0% → 100% | 0d → none | baseline start 2026-10-22 → none; baseline finish 2026-10-29 → none |
| 17 | Отделка стен ванной | 2026-10-30 A | 2026-11-12 → 2026-11-13 (+1d) |  | 0% → 40% |  | baseline start 2026-10-30 → none; baseline finish 2026-11-12 → none |
| 18 | Отделка потолка ванной | 2026-11-13 → 2026-11-16 (+3d) | 2026-11-16 → 2026-11-17 (+1d) |  |  |  | baseline start 2026-11-13 → none; baseline finish 2026-11-16 → none |
| 19 | Отделка пола ванной | 2026-11-17 → 2026-11-18 (+1d) | 2026-11-18 → 2026-11-19 (+1d) |  |  |  | baseline start 2026-11-17 → none; baseline finish 2026-11-18 → none |
| 20 | Установка сантехники | 2026-11-19 → 2026-11-20 (+1d) | 2026-11-19 → 2026-11-20 (+1d) |  |  |  | baseline start 2026-11-19 → none; baseline finish 2026-11-19 → none |
| 21 | Ремонт ванной завершен | 2026-11-19 → 2026-11-20 (+1d) | 2026-11-19 → 2026-11-20 (+1d) |  |  |  | baseline start 2026-11-19 → none; baseline finish 2026-11-19 → none |
| 22 | **Отделка стен** | 2026-11-20 → 2026-11-23 (+3d) | 2026-12-18 → 2026-12-21 (+3d) |  |  |  | baseline start 2026-11-20 → none; baseline finish 2026-12-18 → none |
| 23 | Отделка стен в спальне | 2026-11-20 → 2026-11-23 (+3d) | 2026-11-26 → 2026-11-27 (+1d) |  |  |  | baseline start 2026-11-20 → none; baseline finish 2026-11-26 → none |
| 24 | Отделка стен в гостиной | 2026-11-27 → 2026-11-30 (+3d) | 2026-12-07 → 2026-12-08 (+1d) |  |  |  | baseline start 2026-11-27 → none; baseline finish 2026-12-07 → none |
| 25 | Отделка стен в кухне | 2026-12-08 → 2026-12-09 (+1d) | 2026-12-14 → 2026-12-15 (+1d) |  |  |  | baseline start 2026-12-08 → none; baseline finish 2026-12-14 → none |
| 26 | Отделка стен в прихожей | 2026-12-15 → 2026-12-16 (+1d) | 2026-12-18 → 2026-12-21 (+3d) |  |  |  | baseline start 2026-12-15 → none; baseline finish 2026-12-18 → none |
| 27 | Отделка стен завершена | 2026-12-18 → 2026-12-21 (+3d) | 2026-12-18 → 2026-12-21 (+3d) |  |  |  | baseline start 2026-12-18 → none; baseline finish 2026-12-18 → none |
| 28 | **Потолки** | 2026-11-12 A → 2026-11-12 | 2026-12-22 → 2026-12-23 (+1d) | 29d → 30d | 50% → 0% |  | baseline start 2026-11-12 → none; baseline finish 2026-12-22 → none |
| 29 | Замер | 2026-11-12 A → 2026-11-12 | 2026-11-13 A → 2026-11-13 |  | 100% → 0% | none → 11d | baseline start 2026-11-12 → none; baseline finish 2026-11-13 → none |
| 30 | Заказ и оплата потолков | 2026-11-16 A → 2026-11-16 | 2026-11-17 A → 2026-11-17 |  | 100% → 0% | none → 11d | baseline start 2026-11-16 → none; baseline finish 2026-11-17 → none |
| 31 | Навесной потолок в спальне | 2026-12-02 A → 2026-12-02 |  |  | 50% → 0% |  | baseline start 2026-12-02 → none; baseline finish 2026-12-03 → none |
| 32 | Навесной потолок в гостиной | 2026-12-08 A → 2026-12-09 (+1d) | 2026-12-09 → 2026-12-10 (+1d) |  | 50% → 0% | 7d → 9d | baseline start 2026-12-08 → none; baseline finish 2026-12-09 → none |
| 33 | Панельный потолок в кухне | 2026-12-21 → 2026-12-22 (+1d) | 2026-12-22 → 2026-12-23 (+1d) |  |  |  | baseline start 2026-12-21 → none; baseline finish 2026-12-22 → none |
| 34 | Навесной потолок в прихожей | 2026-12-21 → 2026-12-22 (+1d) | 2026-12-22 → 2026-12-23 (+1d) |  |  |  | baseline start 2026-12-21 → none; baseline finish 2026-12-22 → none |
| 35 | Монтаж потолков завершен | 2026-12-22 → 2026-12-23 (+1d) | 2026-12-22 → 2026-12-23 (+1d) |  |  |  | baseline start 2026-12-22 → none; baseline finish 2026-12-22 → none |
| 36 | **Полы** |  | 2027-01-01 → 2027-01-04 (+3d) | 21d → 22d |  |  | baseline start 2026-12-04 → none; baseline finish 2027-01-01 → none |
| 37 | Отделка полов в спальне |  |  |  |  |  | baseline start 2026-12-04 → none; baseline finish 2026-12-11 → none |
| 38 | Отделка полов в гостиной | 2026-12-14 → 2026-12-15 (+1d) | 2026-12-21 → 2026-12-22 (+1d) |  |  |  | baseline start 2026-12-14 → none; baseline finish 2026-12-21 → none |
| 39 | Отделка полов в кухне | 2026-12-23 → 2026-12-24 (+1d) | 2026-12-25 → 2026-12-28 (+3d) |  |  |  | baseline start 2026-12-23 → none; baseline finish 2026-12-25 → none |
| 40 | Отделка полов в прихожей | 2026-12-28 → 2026-12-29 (+1d) | 2027-01-01 → 2027-01-04 (+3d) |  |  |  | baseline start 2026-12-28 → none; baseline finish 2027-01-01 → none |
| 41 | Отделка полов завершена | 2027-01-01 → 2027-01-04 (+3d) | 2027-01-01 → 2027-01-04 (+3d) |  |  |  | baseline start 2027-01-01 → none; baseline finish 2027-01-01 → none |
| 42 | Конец проекта | 2027-01-01 → 2027-01-04 (+3d) | 2027-01-01 → 2027-01-04 (+3d) |  |  |  | baseline start 2027-01-01 → none; baseline finish 2027-01-01 → none |

## Version 3 (saved 2026-11-22, file задачи.mpp)

Last finish 2027-01-04 → 2027-01-01 (-3d). Complete tasks 1 → 0.

Changed:

| ID | Task | Start | Finish | Duration | Complete | Total float |
| --- | --- | --- | --- | --- | --- | --- |
| 15 | **Ванная** | 2026-10-22 A → 2026-10-22 | 2026-11-20 → 2026-11-19 (-1d) | 22d → 21d | 38% → 0% |  |
| 16 | Снятие штукатурки в ванной | 2026-10-22 A → 2026-10-22 | 2026-10-29 A → 2026-10-29 |  | 100% → 0% | none → 0d |
| 17 | Отделка стен ванной | 2026-10-30 A → 2026-10-30 | 2026-11-13 → 2026-11-12 (-1d) |  | 40% → 0% |  |
| 18 | Отделка потолка ванной | 2026-11-16 → 2026-11-13 (-3d) | 2026-11-17 → 2026-11-16 (-1d) |  |  |  |
| 19 | Отделка пола ванной | 2026-11-18 → 2026-11-17 (-1d) | 2026-11-19 → 2026-11-18 (-1d) |  |  |  |
| 20 | Установка сантехники | 2026-11-20 → 2026-11-19 (-1d) | 2026-11-20 → 2026-11-19 (-1d) |  |  |  |
| 21 | Ремонт ванной завершен | 2026-11-20 → 2026-11-19 (-1d) | 2026-11-20 → 2026-11-19 (-1d) |  |  |  |
| 22 | **Отделка стен** | 2026-11-23 → 2026-11-20 (-3d) | 2026-12-21 → 2026-12-18 (-3d) |  |  |  |
| 23 | Отделка стен в спальне | 2026-11-23 → 2026-11-20 (-3d) | 2026-11-27 → 2026-11-26 (-1d) |  |  |  |
| 24 | Отделка стен в гостиной | 2026-11-30 → 2026-11-27 (-3d) | 2026-12-08 → 2026-12-07 (-1d) |  |  |  |
| 25 | Отделка стен в кухне | 2026-12-09 → 2026-12-08 (-1d) | 2026-12-15 → 2026-12-14 (-1d) |  |  |  |
| 26 | Отделка стен в прихожей | 2026-12-16 → 2026-12-15 (-1d) | 2026-12-21 → 2026-12-18 (-3d) |  |  |  |
| 27 | Отделка стен завершена | 2026-12-21 → 2026-12-18 (-3d) | 2026-12-21 → 2026-12-18 (-3d) |  |  |  |
| 28 | **Потолки** |  | 2026-12-23 → 2026-12-22 (-1d) | 30d → 29d |  | 8d → 3d |
| 32 | Навесной потолок в гостиной | 2026-12-09 → 2026-12-08 (-1d) | 2026-12-10 → 2026-12-09 (-1d) |  |  | 9d → 2d |
| 33 | Панельный потолок в кухне | 2026-12-22 → 2026-12-21 (-1d) | 2026-12-23 → 2026-12-22 (-1d) |  |  |  |
| 34 | Навесной потолок в прихожей | 2026-12-22 → 2026-12-21 (-1d) | 2026-12-23 → 2026-12-22 (-1d) |  |  |  |
| 35 | Монтаж потолков завершен | 2026-12-23 → 2026-12-22 (-1d) | 2026-12-23 → 2026-12-22 (-1d) |  |  |  |
| 36 | **Полы** | 2026-12-04 A | 2027-01-04 → 2027-01-01 (-3d) | 22d → 21d | 0% → 25% |  |
| 37 | Отделка полов в спальне | 2026-12-04 A |  |  | 0% → 67% |  |
| 38 | Отделка полов в гостиной | 2026-12-15 → 2026-12-14 A (-1d) | 2026-12-22 → 2026-12-21 (-1d) |  | 0% → 17% |  |
| 39 | Отделка полов в кухне | 2026-12-24 → 2026-12-23 (-1d) | 2026-12-28 → 2026-12-25 (-3d) |  |  |  |
| 40 | Отделка полов в прихожей | 2026-12-29 → 2026-12-28 (-1d) | 2027-01-04 → 2027-01-01 (-3d) |  |  |  |
| 41 | Отделка полов завершена | 2027-01-04 → 2027-01-01 (-3d) | 2027-01-04 → 2027-01-01 (-3d) |  |  |  |
| 42 | Конец проекта | 2027-01-04 → 2027-01-01 (-3d) | 2027-01-04 → 2027-01-01 (-3d) |  |  |  |

## Version 4 (saved 2026-11-22, file ресурсы.mpp)

Last finish stays 2027-01-01. Complete tasks 0 → 1.

Changed:

| ID | Task | Start | Finish | Complete | Total float |
| --- | --- | --- | --- | --- | --- |
| 2 | **Выравнивание стен** | 2026-10-22 A |  | 0% → 40% | 3d → 6d |
| 3 | Стены в спальне | 2026-10-22 A | 2026-10-27 A | 0% → 100% | 3d → none |
| 4 | Стены в гостиной | 2026-10-28 A |  | 0% → 50% | 3d → 6d |
| 36 | **Полы** | 2026-12-04 A → 2026-12-04 |  | 25% → 0% |  |
| 37 | Отделка полов в спальне | 2026-12-04 A → 2026-12-04 |  | 67% → 0% |  |
| 38 | Отделка полов в гостиной | 2026-12-14 A → 2026-12-14 |  | 17% → 0% |  |

## Version 5 (data date 2026-10-23, saved 2026-11-22, file Отслеживание.mpp)

Last finish stays 2027-01-01.

Changed:

| ID | Task | Start | Finish | Duration | Complete | Total float | Other |
| --- | --- | --- | --- | --- | --- | --- | --- |
| 1 | Начало проекта | 2026-10-21 A | 2026-10-21 A |  | 0% → 100% | 0d → none | baseline start none → 2026-10-21; baseline finish none → 2026-10-21 |
| 2 | **Выравнивание стен** |  |  |  | 40% → 13% |  | baseline start none → 2026-10-22; baseline finish none → 2026-11-11 |
| 3 | Стены в спальне |  | 2026-10-27 A → 2026-10-27 |  | 100% → 50% | none → 6d | baseline start none → 2026-10-22; baseline finish none → 2026-10-27 |
| 4 | Стены в гостиной | 2026-10-28 A → 2026-10-28 |  |  | 50% → 0% |  | baseline start none → 2026-10-28; baseline finish none → 2026-11-02 |
| 5 | Стены в кухне |  |  |  |  |  | baseline start none → 2026-11-03; baseline finish none → 2026-11-05 |
| 6 | Стены в прихожей |  |  |  |  |  | baseline start none → 2026-11-06; baseline finish none → 2026-11-11 |
| 7 | Выравнивание стен завершено |  |  |  |  |  | baseline start none → 2026-11-11; baseline finish none → 2026-11-11 |
| 8 | **Санузел** | 2026-10-22 A | 2026-11-06 → 2026-11-09 (+3d) | 12d → 13d | 0% → 17% | 9d → 8d | baseline start none → 2026-10-22; baseline finish none → 2026-11-06 |
| 9 | Снятие штукатурки в санузле | 2026-10-22 A | 2026-10-26 → 2026-10-27 (+1d) |  | 0% → 67% | 9d → 8d | baseline start none → 2026-10-22; baseline finish none → 2026-10-26 |
| 10 | Отделка стен санузла | 2026-10-27 → 2026-10-28 (+1d) | 2026-10-30 → 2026-11-02 (+3d) |  |  | 9d → 8d | baseline start none → 2026-10-27; baseline finish none → 2026-10-30 |
| 11 | Отделка потолка санузла | 2026-11-02 → 2026-11-03 (+1d) | 2026-11-03 → 2026-11-04 (+1d) |  |  | 9d → 8d | baseline start none → 2026-11-02; baseline finish none → 2026-11-03 |
| 12 | Отделка пола санузла | 2026-11-04 → 2026-11-05 (+1d) | 2026-11-05 → 2026-11-06 (+1d) |  |  | 9d → 8d | baseline start none → 2026-11-04; baseline finish none → 2026-11-05 |
| 13 | Установка сантехнического оборудования | 2026-11-06 → 2026-11-09 (+3d) | 2026-11-06 → 2026-11-09 (+3d) |  |  | 9d → 8d | baseline start none → 2026-11-06; baseline finish none → 2026-11-06 |
| 14 | Ремонт санузла завершен | 2026-11-06 → 2026-11-09 (+3d) | 2026-11-06 → 2026-11-09 (+3d) |  |  | 9d → 8d | baseline start none → 2026-11-06; baseline finish none → 2026-11-06 |
| 15 | **Ванная** | 2026-10-22 A |  |  | 0% → 15% |  | baseline start none → 2026-10-22; baseline finish none → 2026-11-19 |
| 16 | Снятие штукатурки в ванной | 2026-10-22 A |  |  | 0% → 67% |  | baseline start none → 2026-10-22; baseline finish none → 2026-10-29 |
| 17 | Отделка стен ванной |  |  |  |  |  | baseline start none → 2026-10-30; baseline finish none → 2026-11-12 |
| 18 | Отделка потолка ванной |  |  |  |  |  | baseline start none → 2026-11-13; baseline finish none → 2026-11-16 |
| 19 | Отделка пола ванной |  |  |  |  |  | baseline start none → 2026-11-17; baseline finish none → 2026-11-18 |
| 20 | Установка сантехники |  |  |  |  |  | baseline start none → 2026-11-19; baseline finish none → 2026-11-19 |
| 21 | Ремонт ванной завершен |  |  |  |  |  | baseline start none → 2026-11-19; baseline finish none → 2026-11-19 |
| 22 | **Отделка стен** |  |  |  |  |  | baseline start none → 2026-11-20; baseline finish none → 2026-12-18 |
| 23 | Отделка стен в спальне |  |  |  |  |  | baseline start none → 2026-11-20; baseline finish none → 2026-11-26 |
| 24 | Отделка стен в гостиной |  |  |  |  |  | baseline start none → 2026-11-27; baseline finish none → 2026-12-07 |
| 25 | Отделка стен в кухне |  |  |  |  |  | baseline start none → 2026-12-08; baseline finish none → 2026-12-14 |
| 26 | Отделка стен в прихожей |  |  |  |  |  | baseline start none → 2026-12-15; baseline finish none → 2026-12-18 |
| 27 | Отделка стен завершена |  |  |  |  |  | baseline start none → 2026-12-18; baseline finish none → 2026-12-18 |
| 28 | **Потолки** |  |  |  |  |  | baseline start none → 2026-11-12; baseline finish none → 2026-12-22 |
| 29 | Замер |  |  |  |  |  | baseline start none → 2026-11-12; baseline finish none → 2026-11-13 |
| 30 | Заказ и оплата потолков |  |  |  |  |  | baseline start none → 2026-11-16; baseline finish none → 2026-11-17 |
| 31 | Навесной потолок в спальне |  |  |  |  |  | baseline start none → 2026-12-02; baseline finish none → 2026-12-03 |
| 32 | Навесной потолок в гостиной |  |  |  |  |  | baseline start none → 2026-12-08; baseline finish none → 2026-12-09 |
| 33 | Панельный потолок в кухне |  |  |  |  |  | baseline start none → 2026-12-21; baseline finish none → 2026-12-22 |
| 34 | Навесной потолок в прихожей |  |  |  |  |  | baseline start none → 2026-12-21; baseline finish none → 2026-12-22 |
| 35 | Монтаж потолков завершен |  |  |  |  |  | baseline start none → 2026-12-22; baseline finish none → 2026-12-22 |
| 36 | **Полы** |  |  |  |  |  | baseline start none → 2026-12-04; baseline finish none → 2027-01-01 |
| 37 | Отделка полов в спальне |  |  |  |  |  | baseline start none → 2026-12-04; baseline finish none → 2026-12-11 |
| 38 | Отделка полов в гостиной |  |  |  |  |  | baseline start none → 2026-12-14; baseline finish none → 2026-12-21 |
| 39 | Отделка полов в кухне |  |  |  |  |  | baseline start none → 2026-12-23; baseline finish none → 2026-12-25 |
| 40 | Отделка полов в прихожей |  |  |  |  |  | baseline start none → 2026-12-28; baseline finish none → 2027-01-01 |
| 41 | Отделка полов завершена |  |  |  |  |  | baseline start none → 2027-01-01; baseline finish none → 2027-01-01 |
| 42 | Конец проекта |  |  |  |  |  | baseline start none → 2027-01-01; baseline finish none → 2027-01-01 |

## Version 6 (data date 2026-10-23, saved 2026-11-22, file Отслеживание2.mpp)

Last finish stays 2027-01-01.

Changed:

| ID | Task | Start | Finish | Duration | Total float |
| --- | --- | --- | --- | --- | --- |
| 8 | **Санузел** |  | 2026-11-09 → 2026-11-06 (-3d) | 13d → 12d | 8d → 9d |
| 9 | Снятие штукатурки в санузле |  | 2026-10-27 → 2026-10-26 (-1d) |  | 8d → 9d |
| 10 | Отделка стен санузла | 2026-10-28 → 2026-10-27 (-1d) | 2026-11-02 → 2026-10-30 (-3d) |  | 8d → 9d |
| 11 | Отделка потолка санузла | 2026-11-03 → 2026-11-02 (-1d) | 2026-11-04 → 2026-11-03 (-1d) |  | 8d → 9d |
| 12 | Отделка пола санузла | 2026-11-05 → 2026-11-04 (-1d) | 2026-11-06 → 2026-11-05 (-1d) |  | 8d → 9d |
| 13 | Установка сантехнического оборудования | 2026-11-09 → 2026-11-06 (-3d) | 2026-11-09 → 2026-11-06 (-3d) |  | 8d → 9d |
| 14 | Ремонт санузла завершен | 2026-11-09 → 2026-11-06 (-3d) | 2026-11-09 → 2026-11-06 (-3d) |  | 8d → 9d |
| 16 | Снятие штукатурки в ванной |  | 2026-10-29 → 2026-10-26 (-3d) |  | 0d → 3d |
