How a schedule from MS Project changed from version to version. A marks actual dates.

## Version 1 (data date 2026-10-23, saved 2026-11-23, file ПЗ4_10_Отслеживание.mpp)

| ID | WBS | Task | Duration | Start | Finish | Predecessors | Complete | Total float | Constraint |
| --- | --- | --- | --- | --- | --- | --- | --- | --- | --- |
| 1 |  | Начало проекта | 1d | 2026-10-21 A | 2026-10-21 A |  | 100% |  | start no earlier than 2026-10-21 |
| 2 | 2 | **Выравнивание стен** | 15d | 2026-10-22 A | 2026-11-11 |  | 13% | 6d |  |
| 3 |  | Стены в спальне | 4d | 2026-10-22 A | 2026-10-27 | 1 | 50% | 6d |  |
| 4 |  | Стены в гостиной | 4d | 2026-10-28 | 2026-11-02 | 3 |  | 6d |  |
| 5 |  | Стены в кухне | 3d | 2026-11-03 | 2026-11-05 | 4 |  | 6d |  |
| 6 |  | Стены в прихожей | 4d | 2026-11-06 | 2026-11-11 | 5 |  | 6d |  |
| 7 |  | Выравнивание стен завершено | 0d | 2026-11-11 | 2026-11-11 | 6 |  | 6d |  |
| 8 | 3 | **Санузел** | 13d | 2026-10-22 A | 2026-11-09 |  | 31% | 8d |  |
| 9 |  | Снятие штукатурки в санузле | 4d | 2026-10-22 A | 2026-10-27 A | 1 | 100% |  |  |
| 10 |  | Отделка стен санузла | 4d | 2026-10-28 | 2026-11-02 | 9 |  | 8d |  |
| 11 |  | Отделка потолка санузла | 2d | 2026-11-03 | 2026-11-04 | 10 |  | 8d |  |
| 12 |  | Отделка пола санузла | 2d | 2026-11-05 | 2026-11-06 | 11 |  | 8d |  |
| 13 |  | Установка сантехнического оборудования | 1d | 2026-11-09 | 2026-11-09 | 12 |  | 8d |  |
| 14 |  | Ремонт санузла завершен | 0d | 2026-11-09 | 2026-11-09 | 13 |  | 8d |  |
| 15 | 4 | **Ванная** | 21d | 2026-10-22 A | 2026-11-19 |  | 15% | 0d |  |
| 16 |  | Снятие штукатурки в ванной | 3d | 2026-10-22 A | 2026-10-26 | 1 | 67% | 3d |  |
| 17 |  | Отделка стен ванной | 5d | 2026-10-30 | 2026-11-12 | 16 |  | 0d | finish no earlier than 2026-11-12 |
| 18 |  | Отделка потолка ванной | 2d | 2026-11-13 | 2026-11-16 | 17 |  | 0d |  |
| 19 |  | Отделка пола ванной | 2d | 2026-11-17 | 2026-11-18 | 18 |  | 0d |  |
| 20 |  | Установка сантехники | 1d | 2026-11-19 | 2026-11-19 | 19 |  | 0d |  |
| 21 |  | Ремонт ванной завершен | 0d | 2026-11-19 | 2026-11-19 | 20 |  | 0d |  |
| 22 | 5 | **Отделка стен** | 21d | 2026-11-20 | 2026-12-18 |  |  | 0d |  |
| 23 |  | Отделка стен в спальне | 5d | 2026-11-20 | 2026-11-26 | 7, 14, 21 |  | 0d |  |
| 24 |  | Отделка стен в гостиной | 7d | 2026-11-27 | 2026-12-07 | 23 |  | 0d |  |
| 25 |  | Отделка стен в кухне | 5d | 2026-12-08 | 2026-12-14 | 24 |  | 0d |  |
| 26 |  | Отделка стен в прихожей | 4d | 2026-12-15 | 2026-12-18 | 25 |  | 0d |  |
| 27 |  | Отделка стен завершена | 0d | 2026-12-18 | 2026-12-18 | 26 |  | 10d |  |
| 28 | 6 | **Потолки** | 29d | 2026-11-12 | 2026-12-22 |  |  | 8d |  |
| 29 |  | Замер | 2d | 2026-11-12 | 2026-11-13 | 7 |  | 11d |  |
| 30 |  | Заказ и оплата потолков | 2d | 2026-11-16 | 2026-11-17 | 29 |  | 11d |  |
| 31 |  | Навесной потолок в спальне | 2d | 2026-12-02 | 2026-12-03 | 23, 30FS+10d |  | 15d |  |
| 32 |  | Навесной потолок в гостиной | 2d | 2026-12-08 | 2026-12-09 | 24, 30FS+10d |  | 7d |  |
| 33 |  | Панельный потолок в кухне | 2d | 2026-12-21 | 2026-12-22 | 25, 30 |  | 5d |  |
| 34 |  | Навесной потолок в прихожей | 2d | 2026-12-21 | 2026-12-22 | 26, 30FS+10d |  | 0d |  |
| 35 |  | Монтаж потолков завершен | 0d | 2026-12-22 | 2026-12-22 | 31, 32, 33, 34 |  | 8d |  |
| 36 | 7 | **Полы** | 21d | 2026-12-04 | 2027-01-01 |  |  | 0d |  |
| 37 |  | Отделка полов в спальне | 6d | 2026-12-04 | 2026-12-11 | 31 |  | 15d |  |
| 38 |  | Отделка полов в гостиной | 6d | 2026-12-14 | 2026-12-21 | 32 |  | 9d |  |
| 39 |  | Отделка полов в кухне | 3d | 2026-12-23 | 2026-12-25 | 33 |  | 5d |  |
| 40 |  | Отделка полов в прихожей | 5d | 2026-12-28 | 2027-01-01 | 34 |  | 0d |  |
| 41 |  | Отделка полов завершена | 0d | 2027-01-01 | 2027-01-01 | 37, 38, 39, 40 |  | 0d |  |
| 42 |  | Конец проекта | 0d | 2027-01-01 | 2027-01-01 | 41 |  | 0d |  |

## Version 2 (data date 2026-12-10, saved 2026-11-09, file ПЗ4_09_Затраты.mpp)

Last finish 2027-01-01 → 2026-12-23 (-9d). Complete tasks 2 → 6.

Changed:

| ID | Task | Start | Finish | Duration | Complete | Total float | Other |
| --- | --- | --- | --- | --- | --- | --- | --- |
| 1 | Начало проекта | 2026-10-21 A → 2026-10-23 (+2d) | 2026-10-21 A → 2026-10-23 (+2d) | 1d → 0d | 100% → 0% | none → 0d | constraint start no earlier than 2026-10-21 → none; baseline start 2026-10-21 → 2026-10-23; baseline finish 2026-10-21 → 2026-10-23 |
| 2 | **Выравнивание стен** | 2026-10-22 A → 2026-10-23 (+1d) | 2026-11-11 → 2026-11-12 (+1d) |  | 13% → 0% | 6d → 0d | baseline start 2026-10-22 → 2026-10-23; baseline finish 2026-11-11 → 2026-11-12 |
| 3 | Стены в спальне | 2026-10-22 A → 2026-10-23 (+1d) | 2026-10-27 → 2026-10-28 (+1d) |  | 50% → 0% | 6d → 0d | baseline start 2026-10-22 → 2026-10-23; baseline finish 2026-10-27 → 2026-10-28 |
| 4 | Стены в гостиной | 2026-10-28 → 2026-10-29 (+1d) | 2026-11-02 → 2026-11-03 (+1d) |  |  | 6d → 0d | baseline start 2026-10-28 → 2026-10-29; baseline finish 2026-11-02 → 2026-11-03 |
| 5 | Стены в кухне | 2026-11-03 → 2026-11-04 (+1d) | 2026-11-05 → 2026-11-06 (+1d) |  |  | 6d → 0d | baseline start 2026-11-03 → 2026-11-04; baseline finish 2026-11-05 → 2026-11-06 |
| 6 | Стены в прихожей | 2026-11-06 → 2026-11-09 (+3d) | 2026-11-11 → 2026-11-12 (+1d) |  |  | 6d → 0d | baseline start 2026-11-06 → 2026-11-09; baseline finish 2026-11-11 → 2026-11-12 |
| 7 | Выравнивание стен завершено | 2026-11-11 → 2026-11-12 (+1d) | 2026-11-11 → 2026-11-12 (+1d) |  |  | 6d → 0d | baseline start 2026-11-11 → 2026-11-12; baseline finish 2026-11-11 → 2026-11-12 |
| 8 | **Санузел** | 2026-10-22 A → 2026-10-23 A (+1d) | 2026-11-09 → 2026-11-11 A (+2d) | 13d → 14d | 31% → 100% | 8d → none | baseline start 2026-10-22 → 2026-10-23; baseline finish 2026-11-06 → 2026-11-11 |
| 9 | Снятие штукатурки в санузле | 2026-10-22 A → 2026-10-23 A (+1d) | 2026-10-27 A → 2026-10-29 A (+2d) | 4d → 5d |  |  | baseline start 2026-10-22 → 2026-10-23; baseline finish 2026-10-26 → 2026-10-29 |
| 10 | Отделка стен санузла | 2026-10-28 → 2026-10-30 A (+2d) | 2026-11-02 → 2026-11-04 A (+2d) |  | 0% → 100% | 8d → none | resources Плитка [10 м^2]; Плиточник → Плиточник; Плитка [10 м2]; baseline start 2026-10-27 → 2026-10-30; baseline finish 2026-10-30 → 2026-11-04 |
| 11 | Отделка потолка санузла | 2026-11-03 → 2026-11-05 A (+2d) | 2026-11-04 → 2026-11-06 A (+2d) |  | 0% → 100% | 8d → none | resources Плиточник; Панель [1 шт] → Плиточник; Панель [5 шт.]; baseline start 2026-11-02 → 2026-11-05; baseline finish 2026-11-03 → 2026-11-06 |
| 12 | Отделка пола санузла | 2026-11-05 → 2026-11-09 A (+4d) | 2026-11-06 → 2026-11-10 A (+4d) |  | 0% → 100% | 8d → none | resources Плитка [5 м^2]; Плиточник → Плиточник; Плитка [5 м2]; baseline start 2026-11-04 → 2026-11-09; baseline finish 2026-11-05 → 2026-11-10 |
| 13 | Установка сантехнического оборудования | 2026-11-09 → 2026-11-11 A (+2d) | 2026-11-09 → 2026-11-11 A (+2d) |  | 0% → 100% | 8d → none | resources Слесарь-водопроводчик; Унитаз-компакт [1 шт] → Слесарь-водопроводчик; Унитаз-компакт [1 шт.]; baseline start 2026-11-06 → 2026-11-11; baseline finish 2026-11-06 → 2026-11-11 |
| 14 | Ремонт санузла завершен | 2026-11-09 → 2026-11-11 A (+2d) | 2026-11-09 → 2026-11-11 A (+2d) |  | 0% → 100% | 8d → none | baseline start 2026-11-06 → 2026-11-11; baseline finish 2026-11-06 → 2026-11-11 |
| 15 | **Ванная** | 2026-10-22 A → 2026-10-23 (+1d) | 2026-11-19 → 2026-11-12 (-7d) | 21d → 15d | 15% → 0% |  | baseline start 2026-10-22 → 2026-10-23; baseline finish 2026-11-19 → 2026-11-12 |
| 16 | Снятие штукатурки в ванной | 2026-10-22 A → 2026-10-23 (+1d) | 2026-10-26 → 2026-10-29 (+3d) | 3d → 5d | 67% → 0% | 3d → 0d | baseline start 2026-10-22 → 2026-10-23 |
| 17 | Отделка стен ванной |  | 2026-11-12 → 2026-11-05 (-7d) |  |  |  | constraint finish no earlier than 2026-11-12 → none; resources Плитка [10 м^2]; Плиточник → Плитка [10 м2]; Плиточник; baseline finish 2026-11-12 → 2026-11-05 |
| 18 | Отделка потолка ванной | 2026-11-13 → 2026-11-06 (-7d) | 2026-11-16 → 2026-11-09 (-7d) |  |  |  | resources Плиточник; Панель [6 шт] → Панель [6 шт.]; Плиточник; baseline start 2026-11-13 → 2026-11-06; baseline finish 2026-11-16 → 2026-11-09 |
| 19 | Отделка пола ванной | 2026-11-17 → 2026-11-10 (-7d) | 2026-11-18 → 2026-11-11 (-7d) |  |  |  | resources Плитка [6 м^2]; Плиточник → Плитка [6 м2]; Плиточник; baseline start 2026-11-17 → 2026-11-10; baseline finish 2026-11-18 → 2026-11-11 |
| 20 | Установка сантехники | 2026-11-19 → 2026-11-12 (-7d) | 2026-11-19 → 2026-11-12 (-7d) |  |  |  | resources Ванна [1 шт]; Слесарь-водопроводчик; Раковина [1 шт]; Смеситель с душем [1 шт] → Ванна [1 шт.]; Раковина [1 шт.]; Слесарь-водопроводчик; Смеситель с душем [1 шт.]; baseline start 2026-11-19 → 2026-11-12; baseline finish 2026-11-19 → 2026-11-12 |
| 21 | Ремонт ванной завершен | 2026-11-19 → 2026-11-12 (-7d) | 2026-11-19 → 2026-11-12 (-7d) |  |  |  | baseline start 2026-11-19 → 2026-11-12; baseline finish 2026-11-19 → 2026-11-12 |
| 22 | **Отделка стен** | 2026-11-20 → 2026-11-13 (-7d) | 2026-12-18 → 2026-12-14 (-4d) | 21d → 22d |  |  | baseline start 2026-11-20 → 2026-11-13; baseline finish 2026-12-18 → 2026-12-14 |
| 23 | Отделка стен в спальне | 2026-11-20 → 2026-11-13 (-7d) | 2026-11-26 → 2026-11-19 (-7d) |  |  |  | resources Обои [8 рул]; Штукатур → Штукатур; Обои [8 рул.]; baseline start 2026-11-20 → 2026-11-13; baseline finish 2026-11-26 → 2026-11-19 |
| 24 | Отделка стен в гостиной | 2026-11-27 → 2026-11-20 (-7d) | 2026-12-07 → 2026-11-30 (-7d) |  |  |  | resources Обои [8 рул]; Штукатур → Штукатур; Обои [8 рул.]; baseline start 2026-11-27 → 2026-11-20; baseline finish 2026-12-07 → 2026-11-30 |
| 25 | Отделка стен в кухне | 2026-12-08 → 2026-12-01 (-7d) | 2026-12-14 → 2026-12-07 (-7d) |  |  |  | resources Штукатур; Плитка [5 м^2]; Плиточник; Панель [10 шт] → Панель [10 шт.]; Плитка [5 м2]; Плиточник; Штукатур; baseline start 2026-12-08 → 2026-12-01; baseline finish 2026-12-14 → 2026-12-07 |
| 26 | Отделка стен в прихожей | 2026-12-15 → 2026-12-08 (-7d) | 2026-12-18 → 2026-12-14 (-4d) | 4d → 5d |  |  | resources Панель [15 шт]; Штукатур; Плиточник → Панель [15 шт.]; Плиточник; Штукатур; baseline start 2026-12-15 → 2026-12-08; baseline finish 2026-12-18 → 2026-12-14 |
| 27 | Отделка стен завершена | 2026-12-18 → 2026-12-14 (-4d) | 2026-12-18 → 2026-12-14 (-4d) |  |  | 10d → 7d | baseline start 2026-12-18 → 2026-12-14; baseline finish 2026-12-18 → 2026-12-14 |
| 28 | **Потолки** | 2026-11-12 → 2026-11-13 (+1d) | 2026-12-22 → 2026-12-16 (-6d) | 29d → 24d |  | 8d → 5d | baseline start 2026-11-12 → 2026-11-13; baseline finish 2026-12-22 → 2026-12-16 |
| 29 | Замер | 2026-11-12 → 2026-11-13 (+1d) | 2026-11-13 → 2026-11-16 (+3d) |  |  | 11d → 7d | baseline start 2026-11-12 → 2026-11-13; baseline finish 2026-11-13 → 2026-11-16 |
| 30 | Заказ и оплата потолков | 2026-11-16 → 2026-11-17 (+1d) | 2026-11-17 → 2026-11-18 (+1d) |  |  | 11d → 7d | resources Навесной потолок → Навесной потолок [1 шт.]; baseline start 2026-11-16 → 2026-11-17; baseline finish 2026-11-17 → 2026-11-18 |
| 31 | Навесной потолок в спальне | 2026-12-02 → 2026-12-03 (+1d) | 2026-12-03 → 2026-12-04 (+1d) |  |  | 15d → 7d | baseline start 2026-12-02 → 2026-12-03; baseline finish 2026-12-03 → 2026-12-04 |
| 32 | Навесной потолок в гостиной | 2026-12-08 → 2026-12-03 (-5d) | 2026-12-09 → 2026-12-04 (-5d) |  |  |  | baseline start 2026-12-08 → 2026-12-03; baseline finish 2026-12-09 → 2026-12-04 |
| 33 | Панельный потолок в кухне | 2026-12-21 → 2026-12-08 (-13d) | 2026-12-22 → 2026-12-09 (-13d) |  |  | 5d → 7d | resources Плиточник; Панель [6 шт] → Плиточник; Панель [6 шт.]; baseline start 2026-12-21 → 2026-12-08; baseline finish 2026-12-22 → 2026-12-09 |
| 34 | Навесной потолок в прихожей | 2026-12-21 → 2026-12-15 (-6d) | 2026-12-22 → 2026-12-16 (-6d) |  |  |  | baseline start 2026-12-21 → 2026-12-15; baseline finish 2026-12-22 → 2026-12-16 |
| 35 | Монтаж потолков завершен | 2026-12-22 → 2026-12-16 (-6d) | 2026-12-22 → 2026-12-16 (-6d) |  |  | 8d → 5d | baseline start 2026-12-22 → 2026-12-16; baseline finish 2026-12-22 → 2026-12-16 |
| 36 | **Полы** | 2026-12-04 → 2026-12-07 (+3d) | 2027-01-01 → 2026-12-23 (-9d) | 21d → 13d |  |  | baseline start 2026-12-04 → 2026-12-07; baseline finish 2027-01-01 → 2026-12-23 |
| 37 | Отделка полов в спальне | 2026-12-04 → 2026-12-07 (+3d) | 2026-12-11 → 2026-12-14 (+3d) |  |  | 15d → 7d | resources Паркет [20 м^2]; Плотник → Паркет [20 м2]; Плотник; baseline start 2026-12-04 → 2026-12-07; baseline finish 2026-12-11 → 2026-12-14 |
| 38 | Отделка полов в гостиной | 2026-12-14 → 2026-12-07 (-7d) | 2026-12-21 → 2026-12-14 (-7d) |  |  | 9d → 7d | resources Паркет [1 м^2]; Плотник → Паркет [20 м2]; Плотник; baseline start 2026-12-14 → 2026-12-07; baseline finish 2026-12-21 → 2026-12-14 |
| 39 | Отделка полов в кухне | 2026-12-23 → 2026-12-10 (-13d) | 2026-12-25 → 2026-12-14 (-11d) |  |  | 5d → 7d | resources Паркет [22 м^2]; Плотник → Паркет [10 м2]; Плотник; baseline start 2026-12-23 → 2026-12-10; baseline finish 2026-12-25 → 2026-12-14 |
| 40 | Отделка полов в прихожей | 2026-12-28 → 2026-12-17 (-11d) | 2027-01-01 → 2026-12-23 (-9d) |  |  |  | resources Паркет [15 м^2]; Плотник → Паркет [15 м2]; Плотник; baseline start 2026-12-28 → 2026-12-17; baseline finish 2027-01-01 → 2026-12-23 |
| 41 | Отделка полов завершена | 2027-01-01 → 2026-12-23 (-9d) | 2027-01-01 → 2026-12-23 (-9d) |  |  |  | baseline start 2027-01-01 → 2026-12-23; baseline finish 2027-01-01 → 2026-12-23 |
| 42 | Конец проекта | 2027-01-01 → 2026-12-23 (-9d) | 2027-01-01 → 2026-12-23 (-9d) |  |  |  | baseline start 2027-01-01 → 2026-12-23; baseline finish 2027-01-01 → 2026-12-23 |
